# PMGT5820_P3_Group11_Baseline

How a schedule from MS Project changed from version to version. A marks actual dates.

## Version 1 (saved 2026-08-30, file nexusone-a1-baseline.mpp)

| ID | WBS | Task | Duration | Start | Finish | Predecessors | Total float | Constraint |
| --- | --- | --- | --- | --- | --- | --- | --- | --- |
| 1 | 1 | **Mobilisation, Product Discovery & Governance** | 64d | 2027-04-01 | 2027-06-30 |  | 0d |  |
| 2 | 1.1 | **Establish Project Governance & Financial Control** | 15d | 2027-04-01 | 2027-04-21 |  | 24d |  |
| 3 |  | Confirm Sponsor, Product Owner and Finance accountabilities | 5d | 2027-04-01 | 2027-04-07 |  | 24d |  |
| 4 |  | Establish product decision and customer-treatment forum | 5d | 2027-04-07 | 2027-04-14 | 3 | 49d |  |
| 5 |  | Approve baseline, tolerances and assurance plan | 5d | 2027-04-14 | 2027-04-21 | 4 | 49d |  |
| 6 | 1.2 | **Product & Legacy Discovery** | 30d | 2027-04-07 | 2027-05-19 |  | 24d |  |
| 7 |  | Catalogue products, variants and account cohorts | 10d | 2027-04-07 | 2027-04-21 | 3 | 24d |  |
| 8 |  | Document interest and fee rules | 15d | 2027-04-21 | 2027-05-12 | 7 | 29d |  |
| 9 |  | Document limits and customer entitlements | 10d | 2027-04-21 | 2027-05-05 | 7 | 34d |  |
| 10 |  | Identify manual workarounds | 8d | 2027-04-21 | 2027-05-03 | 7 | 36d |  |
| 11 |  | Identify undocumented legacy dependencies | 8d | 2027-04-21 | 2027-05-03 | 7 | 36d |  |
| 12 |  | Validate discovery findings with SMEs | 5d | 2027-05-12 | 2027-05-19 | 8, 9, 10, 11 | 29d |  |
| 13 | 1.3 | **Interface & Dependency Planning** | 25d | 2027-04-21 | 2027-05-26 |  | 24d |  |
| 14 |  | Agree customer, payment, channel and compliance interfaces | 15d | 2027-04-21 | 2027-05-12 | 7 | 24d |  |
| 15 |  | Establish migration responsibilities | 5d | 2027-05-12 | 2027-05-19 | 14 | 24d |  |
| 16 |  | Establish reconciliation responsibilities | 5d | 2027-05-12 | 2027-05-19 | 14 | 24d |  |
| 17 |  | Confirm legacy-exit and operational-readiness obligations | 5d | 2027-05-19 | 2027-05-26 | 15, 16 | 24d |  |
| 18 |  | M1 – Product inventory, rationalisation principles and requirements approved | 0d | 2027-06-30 | 2027-06-30 | 5, 12, 17 | 0d | finish no earlier than 2027-06-30 |
| 19 | 2 | **Product Rationalisation & Solution Design** | 129d | 2027-06-30 | 2027-12-31 |  | 0d |  |
| 20 | 2.1 | **Product Target-State Decisions** | 30d | 2027-06-30 | 2027-08-11 |  | 63d |  |
| 21 |  | Define retain, merge, transform and retire treatments | 10d | 2027-06-30 | 2027-07-14 | 18 | 63d |  |
| 22 |  | Complete customer impact assessment | 10d | 2027-07-14 | 2027-07-28 | 21 | 99d |  |
| 23 |  | Complete legal and benefit impact assessment | 6d | 2027-07-14 | 2027-07-22 | 21 | 103d |  |
| 24 |  | Obtain Product approval for treatments | 5d | 2027-07-28 | 2027-08-04 | 22, 23 | 99d |  |
| 25 |  | Obtain CCB approval for treatments | 5d | 2027-08-04 | 2027-08-11 | 24 | 99d |  |
| 26 | 2.2 | **Core Configuration Design** | 35d | 2027-07-14 | 2027-09-01 |  | 84d |  |
| 27 |  | Define product parameters and account structures | 10d | 2027-07-14 | 2027-07-28 | 21 | 84d |  |
| 28 |  | Define interest rules | 10d | 2027-07-28 | 2027-08-11 | 27 | 84d |  |
| 29 |  | Define fee and limit rules | 10d | 2027-07-28 | 2027-08-11 | 27 | 84d |  |
| 30 |  | Define posting rules | 10d | 2027-08-11 | 2027-08-25 | 28, 29 | 84d |  |
| 31 |  | Define statements and notices | 8d | 2027-07-28 | 2027-08-09 | 27 | 88d |  |
| 32 |  | Define customer disclosures | 8d | 2027-08-09 | 2027-08-19 | 31 | 88d |  |
| 33 |  | Review and approve configuration design | 5d | 2027-08-25 | 2027-09-01 | 30, 32 | 84d |  |
| 34 | 2.3 | **Conversion & Reconciliation Design** | 56d | 2027-07-14 | 2027-09-30 |  | 63d |  |
| 35 |  | Define source-to-target account mapping | 15d | 2027-07-14 | 2027-08-04 | 21 | 63d |  |
| 36 |  | Define balance conversion rules | 10d | 2027-08-04 | 2027-08-18 | 35 | 63d |  |
| 37 |  | Define transaction conversion rules | 10d | 2027-08-04 | 2027-08-18 | 35 | 63d |  |
| 38 |  | Define financial reconciliation controls | 10d | 2027-08-18 | 2027-09-01 | 36, 37 | 63d |  |
| 39 |  | Define customer-level reconciliation controls | 8d | 2027-08-18 | 2027-08-30 | 36, 37 | 81d |  |
| 40 |  | Define exception and suspense processes | 8d | 2027-09-01 | 2027-09-13 | 38 | 63d |  |
| 41 |  | Define rollback process | 8d | 2027-09-13 | 2027-09-23 | 40 | 63d |  |
| 42 |  | Approve conversion and reconciliation design | 5d | 2027-09-23 | 2027-09-30 | 39, 41 | 63d |  |
| 43 |  | Schedule Contingency Buffer – Design Gate | 0d | 2027-09-30 | 2027-09-30 | 25, 42, 33 | 63d |  |
| 44 |  | M2 – Target product configuration and conversion design completed | 0d | 2027-12-31 | 2027-12-31 | 43 | 0d | finish no earlier than 2027-12-31 |
| 45 | 3 | **Configuration, Integration & Migration Build** | 98d | 2027-12-31 | 2028-05-24 |  | 27d |  |
| 46 | 3.1 | **Configure Target Core** | 71d | 2027-12-31 | 2028-04-12 |  | 27d |  |
| 47 |  | Configure transaction account products | 20d | 2027-12-31 | 2028-02-01 | 44 | 27d |  |
| 48 |  | Configure savings account products | 20d | 2027-12-31 | 2028-02-01 | 44 | 27d |  |
| 49 |  | Configure interest rules | 12d | 2028-02-01 | 2028-02-17 | 47, 48 | 27d |  |
| 50 |  | Configure fees and limits | 12d | 2028-02-01 | 2028-02-17 | 47, 48 | 27d |  |
| 51 |  | Configure account lifecycle rules | 15d | 2028-02-01 | 2028-02-22 | 47, 48 | 29d |  |
| 52 |  | Configure accounting events | 15d | 2028-02-17 | 2028-03-09 | 49, 50 | 27d |  |
| 53 |  | Configure operational controls | 10d | 2028-02-22 | 2028-03-07 | 51 | 29d |  |
| 54 |  | Review target core configuration | 24d | 2028-03-09 | 2028-04-12 | 52, 53 | 27d |  |
| 55 | 3.2 | **Build Interfaces & Reports** | 24d | 2027-12-31 | 2028-02-07 |  | 78d |  |
| 56 |  | Build identity and customer interfaces | 16d | 2027-12-31 | 2028-01-25 | 44 | 82d |  |
| 57 |  | Build payment interfaces | 20d | 2027-12-31 | 2028-02-01 | 44 | 78d |  |
| 58 |  | Build channel interfaces | 15d | 2027-12-31 | 2028-01-24 | 44 | 83d |  |
| 59 |  | Build finance interfaces | 15d | 2027-12-31 | 2028-01-24 | 44 | 83d |  |
| 60 |  | Build compliance and monitoring feeds | 10d | 2027-12-31 | 2028-01-17 | 44 | 88d |  |
| 61 |  | Build reconciliation dashboard | 9d | 2028-01-24 | 2028-02-07 | 59 | 100d |  |
| 62 |  | Build exception reporting | 4d | 2028-01-17 | 2028-01-21 | 60 | 110d |  |
| 63 | 3.3 | **Build Migration Capability** | 98d | 2027-12-31 | 2028-05-24 |  | 45d |  |
| 64 |  | Develop extraction routines | 15d | 2027-12-31 | 2028-01-24 | 44 | 45d |  |
| 65 |  | Develop transformation routines | 20d | 2028-01-24 | 2028-02-22 | 64 | 45d |  |
| 66 |  | Develop loading routines | 15d | 2028-02-22 | 2028-03-14 | 65 | 71d |  |
| 67 |  | Develop validation controls | 12d | 2028-03-14 | 2028-03-30 | 66 | 71d |  |
| 68 |  | Develop restart controls | 10d | 2028-03-14 | 2028-03-28 | 66 | 83d |  |
| 69 |  | Develop audit controls | 10d | 2028-03-30 | 2028-04-13 | 67 | 71d |  |
| 70 |  | Prepare statement-history migration | 15d | 2028-02-22 | 2028-03-14 | 65 | 45d |  |

| ID | WBS | Task | Duration | Start | Finish | Predecessors | Total float | Constraint |
| --- | --- | --- | --- | --- | --- | --- | --- | --- |
| 71 |  | Prepare archive-access solution | 48d | 2028-03-14 | 2028-05-24 | 70 | 45d |  |
| 72 | 4 | **Testing, Rehearsal & Cutover** | 212.5d? | 2028-04-12 | 2029-02-06 |  | 10d |  |
| 73 | 4.1 | **Functional & Integrated Testing** | 26d | 2028-04-12 | 2028-05-23 |  | 27d |  |
| 74 |  | Validate product calculations | 10d | 2028-04-12 | 2028-05-01 | 54 | 27d |  |
| 75 |  | Validate interest and fee calculations | 10d | 2028-04-12 | 2028-05-01 | 54 | 27d |  |
| 76 |  | Validate accounting outcomes | 10d | 2028-04-12 | 2028-05-01 | 54, 59 | 27d |  |
| 77 |  | Validate customer journeys | 10d | 2028-04-12 | 2028-05-01 | 54, 56, 58 | 27d |  |
| 78 |  | Validate service processes | 8d | 2028-04-12 | 2028-04-27 | 54, 58 | 29d |  |
| 79 |  | Complete performance testing | 10d | 2028-04-12 | 2028-05-01 | 54, 56, 57, 58, 59 | 27d |  |
| 80 |  | Complete security testing | 10d | 2028-04-12 | 2028-05-01 | 54, 56, 60 | 27d |  |
| 81 |  | Complete resilience testing | 10d | 2028-04-12 | 2028-05-01 | 54, 56, 57 | 27d |  |
| 82 |  | Resolve critical testing defects | 12d | 2028-05-01 | 2028-05-17 | 75, 76, 77, 78, 79, 80, 81, 74 | 27d |  |
| 83 |  | Complete SIT approval | 4d | 2028-05-17 | 2028-05-23 | 82 | 27d |  |
| 84 |  | M3 – Core build, interfaces and SIT completed | 0d | 2028-06-30 | 2028-06-30 | 54, 61, 62, 83 | 0d | finish no earlier than 2028-06-30 |
| 85 | 4.3 | **Migration Rehearsals** | 128d | 2028-06-30 | 2029-01-02 |  | 0d |  |
| 86 |  | Prepare rehearsal environment and data | 15d | 2028-06-30 | 2028-07-21 | 68, 69, 71, 84, 153 | 19d |  |
| 87 |  | Execute rehearsal 1 (technical dry run) | 5d | 2028-07-21 | 2028-07-28 | 86 | 19d |  |
| 88 |  | Analyse rehearsal 1 defects and timing | 10d | 2028-07-28 | 2028-08-11 | 87 | 19d |  |
| 89 |  | Resolve rehearsal 1 defects | 20d | 2028-08-11 | 2028-09-08 | 88 | 19d |  |
| 90 |  | Tune conversion and sequencing rules | 10d | 2028-09-08 | 2028-09-22 | 89 | 19d |  |
| 91 |  | Prepare rehearsal 2 data refresh | 10d | 2028-09-22 | 2028-10-09 | 90 | 19d |  |
| 92 |  | Execute first full migration rehearsal | 5d | 2028-10-09 | 2028-10-16 | 91 | 19d |  |
| 93 |  | Perform financial reconciliation | 8d | 2028-10-16 | 2028-10-26 | 92 | 19d |  |
| 94 |  | Perform customer-level reconciliation | 8d | 2028-10-16 | 2028-10-26 | 92 | 19d |  |
| 95 |  | Confirm reconciliation within tolerance | 5d | 2028-10-26 | 2028-11-02 | 93, 94 | 19d |  |
| 96 |  | M4 – First full migration rehearsal and financial reconciliation completed | 0d | 2028-11-30 | 2028-11-30 | 154, 155, 95 | 0d |  |
| 97 |  | Analyse defects and exceptions | 5d | 2028-11-30 | 2028-12-06 | 96 | 0d |  |
| 98 |  | Analyse migration timing | 3d | 2028-10-17 | 2028-10-19 | 92 | 41d |  |
| 99 |  | Resolve rehearsal defects | 7d | 2028-12-06 | 2028-12-15 | 97 | 0d |  |
| 100 |  | Tune migration sequencing | 4d | 2028-12-15 | 2028-12-21 | 98, 99 | 0d |  |
| 101 |  | Tune rollback procedures | 4d | 2028-12-15 | 2028-12-21 | 99 | 0d |  |
| 102 |  | Execute final rehearsal | 3d | 2028-12-21 | 2028-12-28 | 100, 101 | 0d |  |
| 103 |  | Obtain final rehearsal approval | 2d | 2028-12-28 | 2029-01-02 | 102 | 0d |  |
| 104 | 4.4 | **Prepare & Execute Go-Live** | 31.5d? | 2029-01-02 | 2029-02-06 |  | 0d |  |
| 105 |  | Complete business readiness | 4d | 2029-01-02 | 2029-01-08 | 103 | 0d |  |
| 106 |  | Complete finance readiness | 4d | 2029-01-02 | 2029-01-08 | 103 | 0d |  |
| 107 |  | Complete risk readiness | 4d | 2029-01-02 | 2029-01-08 | 103 | 0d |  |
| 108 |  | Complete operational readiness | 4d | 2029-01-02 | 2029-01-08 | 103 | 0d |  |
| 109 |  | Obtain go-live approval | 2d | 2029-01-08 | 2029-01-10 | 106, 107, 108, 105 | 0d |  |
| 110 |  | Schedule Contingency Buffer – Go-Live Readiness | 3d | 2029-01-11 | 2029-01-15 | 109 | 0d |  |
| 111 |  | M5 – Final rehearsal, customer treatment and go-live readiness approved | 0d | 2029-01-15 | 2029-01-15 | 110 | 0d |  |
| 112 |  | Cutover go/no-go confirmation | 2h | 2029-01-27 | 2029-01-27 | 111 | 0d | start no earlier than 2029-01-27 |
| 113 |  | Data freeze and legacy service shutdown | 2h | 2029-01-27 | 2029-01-27 | 112 | 0d |  |
| 114 |  | Execute account migration | 6h | 2029-01-27 | 2029-01-27 | 113 | 0d |  |
| 115 |  | Validate control totals and reconciliation | 3h | 2029-01-27 | 2029-01-27 | 114 | 0d |  |
| 116 |  | Rollback decision point | 0d | 2029-01-27 | 2029-01-27 | 115 | 0d |  |
| 117 |  | Rollback execution window (contingency reserve) | 2h | 2029-01-27 | 2029-01-27 | 116 | 0d |  |
| 118 |  | Execute customer communications | 3h | 2029-01-27 | 2029-01-27 | 114SS | 1d |  |
| 119 |  | Restore services and confirm availability | 1h | 2029-01-27 | 2029-01-28 | 118, 117 | 0d |  |
| 120 |  | Post-cutover service verification | 12h | 2029-01-28 | 2029-01-28 | 119 | 0d |  |
| 121 |  | M6 – Enterprise cutover and account migration executed | 0d? | 2029-01-28 | 2029-01-28 | 120 | 0d |  |
| 122 |  | Monitor balances and transactions | 10d? | 2029-01-28 | 2029-02-06 | 121 | 10d |  |
| 123 |  | Monitor incidents and customer harm | 10d | 2029-01-28 | 2029-02-06 | 121 | 10d |  |
| 124 | 5 | **Stabilisation, Acceptance & Legacy Exit** | 66d? | 2029-01-28 | 2029-04-30 |  | 0d |  |
| 125 | 5.1 | **Hypercare & Exception Resolution** | 20d | 2029-01-28 | 2029-02-20 |  | 0d |  |
| 126 |  | Monitor post-migration performance | 20d | 2029-01-28 | 2029-02-20 | 121 | 0d |  |
| 127 |  | Resolve migration defects | 20d | 2029-01-28 | 2029-02-20 | 121 | 0d |  |
| 128 |  | Resolve reconciliation exceptions | 20d | 2029-01-28 | 2029-02-20 | 121 | 0d |  |
| 129 |  | Monitor customer impacts | 20d | 2029-01-28 | 2029-02-20 | 121 | 5d |  |
| 130 | 5.2 | **Acceptance** | 5d | 2029-02-20 | 2029-02-27 |  | 0d |  |
| 131 |  | Obtain Product acceptance | 5d | 2029-02-20 | 2029-02-27 | 126, 127, 122, 123 | 0d |  |
| 132 |  | Obtain Finance acceptance | 5d | 2029-02-20 | 2029-02-27 | 128 | 0d |  |
| 133 |  | Obtain Operational acceptance | 5d | 2029-02-20 | 2029-02-27 | 126, 129 | 5d |  |
| 134 | 5.3 | **Operational Handover** | 17d | 2029-02-27 | 2029-03-22 |  | 5d |  |
| 135 |  | Transfer residual items | 7d | 2029-02-27 | 2029-03-08 | 131, 132, 133 | 5d |  |
| 136 |  | Transfer service ownership | 5d | 2029-03-08 | 2029-03-15 | 135 | 5d |  |
| 137 |  | Complete knowledge handover | 5d | 2029-03-15 | 2029-03-22 | 136 | 5d |  |
| 138 | 5.4 | **Legacy Exit** | 27d | 2029-02-27 | 2029-04-09 |  | 0d |  |
| 139 |  | Confirm migrated legacy components | 5d | 2029-02-27 | 2029-03-06 | 131, 132 | 0d |  |
| 140 |  | Complete legacy shutdown activities | 12d | 2029-03-06 | 2029-03-22 | 139 | 0d |  |

| ID | WBS | Task | Duration | Start | Finish | Predecessors | Total float | Constraint |
| --- | --- | --- | --- | --- | --- | --- | --- | --- |
| 141 |  | Validate archive access | 5d | 2029-03-22 | 2029-03-29 | 140 | 0d |  |
| 142 |  | Obtain legacy shutdown approval | 5d | 2029-03-29 | 2029-04-09 | 141 | 0d |  |
| 143 | 5.5 | **Commercial & Project Closure** | 41d? | 2029-02-27 | 2029-04-30 |  | 0d |  |
| 144 |  | Finalise contracts | 7d | 2029-02-27 | 2029-03-08 | 132, 131, 133 | 20d |  |
| 145 |  | Finalise project finances | 7d? | 2029-02-27 | 2029-03-08 | 132 | 20d |  |
| 146 |  | Document lessons learned | 5d | 2029-03-22 | 2029-03-29 | 137 | 5d |  |
| 147 |  | Complete benefits handover | 5d | 2029-03-22 | 2029-03-29 | 137 | 5d |  |
| 148 |  | Prepare project closure report | 5d | 2029-04-09 | 2029-04-16 | 142, 144, 146, 147, 145 | 0d |  |
| 149 |  | Obtain Sponsor approval for closure | 2d | 2029-04-16 | 2029-04-18 | 148 | 0d |  |
| 150 |  | Schedule Contingency Buffer – Closure | 7d | 2029-04-18 | 2029-04-30 | 149 | 0d |  |
| 151 |  | M7 – Hypercare exit, legacy shutdown approval and project closure | 0d | 2029-04-30 | 2029-04-30 | 150 | 0d |  |
| 152 | 6 | **External Dependencies** | 151d? | 2028-04-30 | 2028-11-30 |  | 0d |  |
| 153 |  | EXT-1: P2 Golden Record Integrated | 0d? | 2028-04-30 | 2028-04-30 |  | 63d | start no earlier than 2028-04-30 |
| 154 |  | EXT-2: P5 Reconciliation Rules Aligned | 0d? | 2028-09-30 | 2028-09-30 |  | 42d | start no earlier than 2028-09-30 |
| 155 |  | EXT-3: P11 Cutover Factory Ready | 0d? | 2028-11-30 | 2028-11-30 |  | 0d | start no earlier than 2028-11-30 |
| 156 | 7 | **Project Management & Reserves** | 521d? | 2027-04-01 | 2029-04-12 |  | 11.5d |  |
| 157 |  | Project Contingency Allowance | 0d? | 2027-04-01 | 2027-04-01 |  | 532.5d |  |
| 158 |  | Project Management & Controls (Level of Effort) | 521d | 2027-04-01 | 2029-04-12 |  | 11.5d |  |

## Version 2 (data date 2028-06-30, saved 2026-09-20, file nexusone-a2-status.mpp)

Last finish stays 2029-04-30. Complete tasks 0 → 11.

Changed:

| ID | Task | Start | Finish | Duration | Complete | Total float |
| --- | --- | --- | --- | --- | --- | --- |
| 1 | **Mobilisation, Product Discovery & Governance** | 2027-04-01 A |  |  | 0% → 99% | 0d → 468.5d |
| 2 | **Establish Project Governance & Financial Control** | 2027-04-01 A |  |  | 0% → 99% | 24d → 517.5d |
| 3 | Confirm Sponsor, Product Owner and Finance accountabilities | 2027-04-01 A |  |  | 0% → 99% | 24d → 5d |
| 4 | Establish product decision and customer-treatment forum | 2027-04-07 A |  |  | 0% → 99% | 49d → 5d |
| 5 | Approve baseline, tolerances and assurance plan | 2027-04-14 A |  |  | 0% → 99% | 49d → 517.5d |
| 6 | **Product & Legacy Discovery** | 2027-04-07 A |  |  | 0% → 99% | 24d → 497.5d |
| 7 | Catalogue products, variants and account cohorts | 2027-04-07 A |  |  | 0% → 99% | 24d → 8d |
| 8 | Document interest and fee rules | 2027-04-21 A |  |  | 0% → 99% | 29d → 5d |
| 9 | Document limits and customer entitlements | 2027-04-21 A |  |  | 0% → 99% | 34d → 10d |
| 10 | Identify manual workarounds | 2027-04-21 A |  |  | 0% → 99% | 36d → 12d |
| 11 | Identify undocumented legacy dependencies | 2027-04-21 A |  |  | 0% → 99% | 36d → 12d |
| 12 | Validate discovery findings with SMEs | 2027-05-12 A |  |  | 0% → 99% | 29d → 497.5d |
| 13 | **Interface & Dependency Planning** | 2027-04-21 A |  |  | 0% → 99% | 24d → 492.5d |
| 14 | Agree customer, payment, channel and compliance interfaces | 2027-04-21 A |  |  | 0% → 99% | 24d → 5d |
| 15 | Establish migration responsibilities | 2027-05-12 A |  |  | 0% → 99% | 24d → 5d |
| 16 | Establish reconciliation responsibilities | 2027-05-12 A |  |  | 0% → 99% | 24d → 5d |
| 17 | Confirm legacy-exit and operational-readiness obligations | 2027-05-19 A |  |  | 0% → 99% | 24d → 492.5d |
| 18 | M1 – Product inventory, rationalisation principles and requirements approved | 2027-06-30 A | 2027-06-30 A |  | 0% → 100% | 0d → none |
| 19 | **Product Rationalisation & Solution Design** | 2027-06-30 A |  |  | 0% → 99% | 0d → 339.5d |
| 20 | **Product Target-State Decisions** | 2027-06-30 A |  |  | 0% → 99% | 63d → 438.5d |
| 21 | Define retain, merge, transform and retire treatments | 2027-06-30 A |  |  | 0% → 99% | 63d → 6d |
| 22 | Complete customer impact assessment | 2027-07-14 A |  |  | 0% → 99% | 99d → 5d |
| 23 | Complete legal and benefit impact assessment | 2027-07-14 A |  |  | 0% → 99% | 103d → 9d |
| 24 | Obtain Product approval for treatments | 2027-07-28 A |  |  | 0% → 99% | 99d → 5d |
| 25 | Obtain CCB approval for treatments | 2027-08-04 A |  |  | 0% → 99% | 99d → 438.5d |
| 26 | **Core Configuration Design** | 2027-07-14 A |  |  | 0% → 99% | 84d → 423.5d |
| 27 | Define product parameters and account structures | 2027-07-14 A |  |  | 0% → 99% | 84d → 8d |
| 28 | Define interest rules | 2027-07-28 A |  |  | 0% → 99% | 84d → 10d |
| 29 | Define fee and limit rules | 2027-07-28 A |  |  | 0% → 99% | 84d → 10d |
| 30 | Define posting rules | 2027-08-11 A |  |  | 0% → 99% | 84d → 5d |
| 31 | Define statements and notices | 2027-07-28 A |  |  | 0% → 99% | 88d → 8d |
| 32 | Define customer disclosures | 2027-08-09 A |  |  | 0% → 99% | 88d → 9d |
| 33 | Review and approve configuration design | 2027-08-25 A |  |  | 0% → 99% | 84d → 423.5d |
| 34 | **Conversion & Reconciliation Design** | 2027-07-14 A |  |  | 0% → 99% | 63d → 402.5d |
| 35 | Define source-to-target account mapping | 2027-07-14 A |  |  | 0% → 99% | 63d → 10d |
| 36 | Define balance conversion rules | 2027-08-04 A |  |  | 0% → 99% | 63d → 8d |
| 37 | Define transaction conversion rules | 2027-08-04 A |  |  | 0% → 99% | 63d → 8d |
| 38 | Define financial reconciliation controls | 2027-08-18 A |  |  | 0% → 99% | 63d → 8d |
| 39 | Define customer-level reconciliation controls | 2027-08-18 A |  |  | 0% → 99% | 81d → 23d |
| 40 | Define exception and suspense processes | 2027-09-01 A |  |  | 0% → 99% | 63d → 8d |
| 41 | Define rollback process | 2027-09-13 A |  |  | 0% → 99% | 63d → 5d |
| 42 | Approve conversion and reconciliation design | 2027-09-23 A |  |  | 0% → 99% | 63d → 402.5d |
| 43 | Schedule Contingency Buffer – Design Gate | 2027-09-30 A | 2027-09-30 A |  | 0% → 100% | 63d → none |
| 44 | M2 – Target product configuration and conversion design completed | 2027-12-31 A | 2027-12-31 A |  | 0% → 100% | 0d → none |
| 45 | **Configuration, Integration & Migration Build** | 2027-12-31 A | 2028-05-24 → 2028-07-21 (+58d) | 98d → 138.4d | 0% → 86% | 27d → 201.1d |
| 46 | **Configure Target Core** | 2027-12-31 A |  |  | 0% → 99% | 27d → 268.5d |
| 47 | Configure transaction account products | 2027-12-31 A |  |  | 0% → 99% | 27d → 12d |
| 48 | Configure savings account products | 2027-12-31 A |  |  | 0% → 99% | 27d → 12d |
| 49 | Configure interest rules | 2028-02-01 A |  |  | 0% → 99% | 27d → 15d |
| 50 | Configure fees and limits | 2028-02-01 A |  |  | 0% → 99% | 27d → 15d |
| 51 | Configure account lifecycle rules | 2028-02-01 A |  |  | 0% → 99% | 29d → 10d |
| 52 | Configure accounting events | 2028-02-17 A |  |  | 0% → 99% | 27d → 292.5d |
| 53 | Configure operational controls | 2028-02-22 A |  |  | 0% → 99% | 29d → 294.5d |
| 54 | Review target core configuration | 2028-03-09 A | 2028-04-12 A |  | 0% → 100% | 27d → none |
| 55 | **Build Interfaces & Reports** | 2027-12-31 A |  |  | 0% → 99% | 78d → 315.5d |
| 56 | Build identity and customer interfaces | 2027-12-31 A |  |  | 0% → 99% | 82d → 108d |
| 57 | Build payment interfaces | 2027-12-31 A |  |  | 0% → 99% | 78d → 319.5d |
| 58 | Build channel interfaces | 2027-12-31 A |  |  | 0% → 99% | 83d → 109d |
| 59 | Build finance interfaces | 2027-12-31 A |  |  | 0% → 99% | 83d → 9d |
| 60 | Build compliance and monitoring feeds | 2027-12-31 A |  |  | 0% → 99% | 88d → 4d |
| 61 | Build reconciliation dashboard | 2028-01-24 A |  |  | 0% → 99% |  |
| 62 | Build exception reporting | 2028-01-17 A |  |  | 0% → 99% |  |
| 63 | **Build Migration Capability** | 2027-12-31 A | 2028-05-24 → 2028-07-21 (+58d) | 98d → 138.4d | 0% → 70% | 45d → 201.1d |
| 64 | Develop extraction routines | 2027-12-31 A |  |  | 0% → 99% | 45d → 20d |
| 65 | Develop transformation routines | 2028-01-24 A |  |  | 0% → 99% | 45d → 15d |
| 66 | Develop loading routines | 2028-02-22 A |  |  | 0% → 99% | 71d → 10d |
| 67 | Develop validation controls | 2028-03-14 A |  |  | 0% → 99% | 71d → 277.5d |
| 68 | Develop restart controls | 2028-03-14 A |  |  | 0% → 99% |  |
| 69 | Develop audit controls | 2028-03-30 A | 2028-04-13 A |  | 0% → 100% | 71d → none |
| 70 | Prepare statement-history migration | 2028-02-22 A |  |  | 0% → 99% | 45d → 74d |

| ID | Task | Start | Finish | Duration | Complete | Total float | Other |
| --- | --- | --- | --- | --- | --- | --- | --- |
| 71 | Prepare archive-access solution | 2028-03-14 A | 2028-05-24 → 2028-07-21 (+58d) | 48d → 88.4d | 0% → 38% | 45d → 4.6d |  |
| 72 | **Testing, Rehearsal & Cutover** | 2028-04-12 A |  |  | 0% → 17% |  |  |
| 73 | **Functional & Integrated Testing** | 2028-04-12 A | 2028-05-23 → 2028-07-31 (+69d) | 26d → 73.5d | 0% → 30% | 27d → -16d |  |
| 74 | Validate product calculations | 2028-04-12 A | 2028-05-01 A |  | 0% → 100% | 27d → none |  |
| 75 | Validate interest and fee calculations | 2028-04-12 A | 2028-05-01 → 2028-07-04 (+64d) | 10d → 54.5d | 0% → 16% | 27d → -17.5d |  |
| 76 | Validate accounting outcomes | 2028-04-12 A | 2028-05-01 → 2028-07-05 (+65d) | 10d → 56d | 0% → 13% | 27d → -19d |  |
| 77 | Validate customer journeys | 2028-04-12 A | 2028-05-01 → 2028-07-07 (+67d) | 10d → 57.5d | 0% → 10% | 27d → -20.5d |  |
| 78 | Validate service processes | 2028-04-12 A | 2028-04-27 A |  | 0% → 100% | 29d → none |  |
| 79 | Complete performance testing | 2028-04-12 A | 2028-05-01 A |  | 0% → 100% | 27d → none |  |
| 80 | Complete security testing | 2028-04-12 A | 2028-05-01 A |  | 0% → 100% | 27d → none |  |
| 81 | Complete resilience testing | 2028-04-12 A | 2028-05-01 A |  | 0% → 100% | 27d → none |  |
| 82 | Resolve critical testing defects | 2028-05-01 → 2028-07-07 (+67d) | 2028-05-17 → 2028-07-25 (+69d) |  |  | 27d → -20.5d |  |
| 83 | Complete SIT approval | 2028-05-17 → 2028-07-25 (+69d) | 2028-05-23 → 2028-07-31 (+69d) |  |  | 27d → -20.5d |  |
| 84 | M3 – Core build, interfaces and SIT completed | 2028-06-30 → 2028-07-31 (+31d) | 2028-06-30 → 2028-07-31 (+31d) |  |  | 0d → -20.5d |  |
| 85 | **Migration Rehearsals** | 2028-06-30 → 2028-07-31 (+31d) | 2029-01-02 → 2029-01-04 (+2d) | 128d → 109d |  | 0d → -1.5d |  |
| 86 | Prepare rehearsal environment and data | 2028-06-30 → 2028-07-31 (+31d) | 2028-07-21 → 2028-08-21 (+31d) |  |  | 19d → -1.5d |  |
| 87 | Execute rehearsal 1 (technical dry run) | 2028-07-21 → 2028-08-21 (+31d) | 2028-07-28 → 2028-08-28 (+31d) |  |  | 19d → -1.5d |  |
| 88 | Analyse rehearsal 1 defects and timing | 2028-07-28 → 2028-08-28 (+31d) | 2028-08-11 → 2028-09-11 (+31d) |  |  | 19d → -1.5d |  |
| 89 | Resolve rehearsal 1 defects | 2028-08-11 → 2028-09-11 (+31d) | 2028-09-08 → 2028-10-10 (+32d) |  |  | 19d → -1.5d |  |
| 90 | Tune conversion and sequencing rules | 2028-09-08 → 2028-10-10 (+32d) | 2028-09-22 → 2028-10-24 (+32d) |  |  | 19d → -1.5d |  |
| 91 | Prepare rehearsal 2 data refresh | 2028-09-22 → 2028-10-24 (+32d) | 2028-10-09 → 2028-11-07 (+29d) |  |  | 19d → -1.5d |  |
| 92 | Execute first full migration rehearsal | 2028-10-09 → 2028-11-07 (+29d) | 2028-10-16 → 2028-11-14 (+29d) |  |  | 19d → -1.5d |  |
| 93 | Perform financial reconciliation | 2028-10-16 → 2028-11-14 (+29d) | 2028-10-26 → 2028-11-24 (+29d) |  |  | 19d → -1.5d |  |
| 94 | Perform customer-level reconciliation | 2028-10-16 → 2028-11-14 (+29d) | 2028-10-26 → 2028-11-24 (+29d) |  |  | 19d → -1.5d |  |
| 95 | Confirm reconciliation within tolerance | 2028-10-26 → 2028-11-24 (+29d) | 2028-11-02 → 2028-12-01 (+29d) |  |  | 19d → -1.5d |  |
| 96 | M4 – First full migration rehearsal and financial reconciliation completed | 2028-11-30 → 2028-12-01 (+1d) | 2028-11-30 → 2028-12-01 (+1d) |  |  | 0d → -1.5d |  |
| 97 | Analyse defects and exceptions | 2028-11-30 → 2028-12-01 (+1d) | 2028-12-06 → 2028-12-08 (+2d) |  |  | 0d → -1.5d |  |
| 98 | Analyse migration timing | 2028-10-17 → 2028-11-14 (+28d) | 2028-10-19 → 2028-11-17 (+29d) |  |  | 41d → 20.5d |  |
| 99 | Resolve rehearsal defects | 2028-12-06 → 2028-12-08 (+2d) | 2028-12-15 → 2028-12-19 (+4d) |  |  | 0d → -1.5d |  |
| 100 | Tune migration sequencing | 2028-12-15 → 2028-12-19 (+4d) | 2028-12-21 → 2028-12-27 (+6d) |  |  | 0d → -1.5d |  |
| 101 | Tune rollback procedures | 2028-12-15 → 2028-12-19 (+4d) | 2028-12-21 → 2028-12-27 (+6d) |  |  | 0d → -1.5d |  |
| 102 | Execute final rehearsal | 2028-12-21 → 2028-12-27 (+6d) | 2028-12-28 → 2029-01-02 (+5d) |  |  | 0d → -1.5d |  |
| 103 | Obtain final rehearsal approval | 2028-12-28 → 2029-01-02 (+5d) | 2029-01-02 → 2029-01-04 (+2d) |  |  | 0d → -1.5d |  |
| 104 | **Prepare & Execute Go-Live** | 2029-01-02 → 2029-01-04 (+2d) |  | 31.5d? → 30d? |  | 0d → -1.5d |  |
| 105 | Complete business readiness | 2029-01-02 → 2029-01-04 (+2d) | 2029-01-08 → 2029-01-10 (+2d) |  |  | 0d → -1.5d |  |
| 106 | Complete finance readiness | 2029-01-02 → 2029-01-04 (+2d) | 2029-01-08 → 2029-01-10 (+2d) |  |  | 0d → -1.5d |  |
| 107 | Complete risk readiness | 2029-01-02 → 2029-01-04 (+2d) | 2029-01-08 → 2029-01-10 (+2d) |  |  | 0d → -1.5d |  |
| 108 | Complete operational readiness | 2029-01-02 → 2029-01-04 (+2d) | 2029-01-08 → 2029-01-10 (+2d) |  |  | 0d → -1.5d |  |
| 109 | Obtain go-live approval | 2029-01-08 → 2029-01-10 (+2d) | 2029-01-10 → 2029-01-12 (+2d) |  |  | 0d → -1.5d |  |
| 110 | Schedule Contingency Buffer – Go-Live Readiness | 2029-01-11 → 2029-01-12 (+1d) | 2029-01-15 → 2029-01-17 (+2d) |  |  | 0d → -1.5d |  |
| 111 | M5 – Final rehearsal, customer treatment and go-live readiness approved | 2029-01-15 → 2029-01-17 (+2d) | 2029-01-15 → 2029-01-17 (+2d) |  |  | 0d → -1.5d |  |
| 152 | **External Dependencies** | 2028-04-30 A |  |  | 0% → 99% |  |  |
| 153 | EXT-1: P2 Golden Record Integrated | 2028-04-30 A | 2028-04-30 → 2028-05-26 A (+26d) | 0d? → 20d? | 0% → 100% | 63d → none |  |
| 156 | **Project Management & Reserves** | 2027-04-01 A |  |  | 0% → 61% |  |  |
| 157 | Project Contingency Allowance | 2027-04-01 → 2029-01-15 (+655d) | 2027-04-01 → 2029-01-15 (+655d) |  |  | 532.5d → 79.5d | constraint none → start no earlier than 2029-01-15; baseline start 2027-04-01 → 2029-01-15; baseline finish 2027-04-01 → 2029-01-15 |
| 158 | Project Management & Controls (Level of Effort) | 2027-04-01 A |  |  | 0% → 61% |  |  |
